Schedule from MS Project, 2020-02-28 to 2020-02-28, scheduled back from the finish.

## Calendars

- Standard: Mon-Fri 08:00-12:00, 13:00-17:00; Sat-Sun off.

## Schedule

| ID | WBS | Task | Duration | Start | Finish | Total slack | Constraint |
| --- | --- | --- | --- | --- | --- | --- | --- |
| 1 | 1 | **Analyse** | 1d? | 2020-02-28 | 2020-02-28 | 0d | as late as possible |
| 2 | 1.1 | Ist-Analyse durchführen | 1d? | 2020-02-28 | 2020-02-28 | 0d |  |
| 3 | 1.2 | Anforderungen erheben | 1d? | 2020-02-28 | 2020-02-28 | 0d |  |
| 4 | 2 | **Konzeption** | 1d? | 2020-02-28 | 2020-02-28 | 0d | as late as possible |
| 5 | 2.1 | Grobkonzept vervollständigen | 1d? | 2020-02-28 | 2020-02-28 | 0d |  |
| 6 | 2.2 | Feinkonzept erstellen | 1d? | 2020-02-28 | 2020-02-28 | 0d |  |
| 7 | 2.3 | Berechtigungskonzept erstellen | 1d? | 2020-02-28 | 2020-02-28 | 0d | as late as possible |
| 8 | 2.4 | Product-Backlog anlegen | 1d? | 2020-02-28 | 2020-02-28 | 0d | as late as possible |
| 9 | 3 | Kernsystem implementieren | 1d? | 2020-02-28 | 2020-02-28 | 0d |  |
| 10 | 4 | Prozesse implementieren | 1d? | 2020-02-28 | 2020-02-28 | 0d |  |
| 11 | 5 | Schmankerl implementieren | 1d? | 2020-02-28 | 2020-02-28 | 0d |  |
| 12 | 6 | Zusatzfunktionen implementieren | 1d? | 2020-02-28 | 2020-02-28 | 0d |  |
| 13 | 7 | Betriebshandbuch erstellen | 1d? | 2020-02-28 | 2020-02-28 | 0d |  |
| 14 | 8 | Test vorbereiten | 1d? | 2020-02-28 | 2020-02-28 | 0d |  |
| 15 | 9 | Test durchführen | 1d? | 2020-02-28 | 2020-02-28 | 0d |  |
| 16 | 10 | Software installieren | 1d? | 2020-02-28 | 2020-02-28 | 0d |  |
| 17 | 11 | Fehler beheben | 1d? | 2020-02-28 | 2020-02-28 | 0d |  |
| 18 | 12 | Schulungskonzept erarbeiten | 1d? | 2020-02-28 | 2020-02-28 | 0d |  |
| 19 | 13 | Schulung durchführen | 1d? | 2020-02-28 | 2020-02-28 | 0d |  |
| 20 | 14 | Nutzerakzeptanzumfrage durchführen | 1d? | 2020-02-28 | 2020-02-28 | 0d |  |
| 21 | 15 | Nutzerakzeptanzumfrage auswerten | 1d? | 2020-02-28 | 2020-02-28 | 0d |  |
| 22 | 16 | Performanceziele überprüfen | 1d? | 2020-02-28 | 2020-02-28 | 0d |  |
